# Umbau Auf der Wörth 14

Schedule from ProjectLibre, 2022-07-01 to 2023-09-27.

## Calendars

- Standard: Mon-Fri 08:00-12:00, 13:00-17:00; Sat-Sun off.

## Resources

| Resource |
| --- |
| Unassigned |
| Kettler |
| Prinz |
| Budke |
| Koste |
| Kiy |
| Schornsteinfeger |
| Anten |
| Anna-Carina und Andreas |
| Erdgeschoss |
| Obergeschoss |

## Schedule

| ID | Task | Duration | Start | Finish | Constraint | Resources |
| --- | --- | --- | --- | --- | --- | --- |
| 1 | Entscheidung Beleuchtung im Flur | 1d? | 2022-07-01 | 2022-07-01 |  | Anna-Carina und Andreas |
| 2 | Kabel ziehen und Dosen setzen | 14d | 2023-07-24 | 2023-08-10 | start no earlier than 2023-07-24 | Prinz; Obergeschoss |
| 3 | Kabel ziehen und Dosen setzen | 14d | 2023-07-24 | 2023-08-10 | start no earlier than 2023-07-24 | Prinz; Erdgeschoss |
| 4 | Budke: Wände beplanken | 14d | 2023-08-08 | 2023-08-25 | start no earlier than 2023-08-08 | Budke |
| 5 | Koste: Installation Wasser- und Abwasserleitungen | 3d | 2023-08-01 | 2023-08-03 | start no earlier than 2023-08-01 | Koste |
| 6 | Koste: Installation Sanitärartikel | 5d | 2023-08-01 | 2023-08-07 | start no earlier than 2023-08-01 | Koste |
| 7 | Koste: Fußbodenheizung verlegen | 5d | 2023-08-01 | 2023-08-07 | start no earlier than 2023-08-01 | Koste |
| 8 | Budke: Trockenestrich verlegen | 5d | 2023-08-01 | 2023-08-07 | start no earlier than 2023-08-01 | Budke |
| 9 | Budke: Vorwände im Badezimmer | 2d | 2023-08-01 | 2023-08-02 | start no earlier than 2023-08-01 | Budke |
| 10 | Kiy: Bodenbeläge | 14d | 2023-08-01 | 2023-08-18 | start no earlier than 2023-08-01 | Kiy |
| 11 | Fliesen bestellen | 1d | 2023-08-01 | 2023-08-01 | start no earlier than 2023-08-01 | Anna-Carina und Andreas |
| 12 | Parkett bestellen | 1d | 2023-08-01 | 2023-08-01 | start no earlier than 2023-08-01 | Anna-Carina und Andreas |
| 13 | Lieferzeit: Fliesen | 42d | 2023-08-01 | 2023-09-27 | start no earlier than 2023-08-01 |  |
| 14 | Lieferzeit: Parkett | 42d | 2023-08-01 | 2023-09-27 | start no earlier than 2023-08-01 |  |
| 15 | Anten: Kaminaufbau | 5d | 2022-07-01 | 2022-07-07 |  | Anten |
| 16 | Kiy: Tapezieren | 5d | 2022-07-01 | 2022-07-07 |  | Kiy |
| 17 | Kiy: Streichen | 5d | 2022-07-01 | 2022-07-07 |  | Kiy |
| 18 | Prinz: Steckdosen, Schalter etc. installieren | 1d? | 2022-07-01 | 2022-07-01 |  | Prinz |
| 19 | Schornsteinfeger: Kaminabnahme | 1d? | 2022-07-01 | 2022-07-01 |  | Schornsteinfeger |
| 20 | Estrich gießen | 1d? | 2022-07-01 | 2022-07-01 |  | Kettler; Erdgeschoss |
| 21 | Wände putzen EG | 1d? | 2022-07-01 | 2022-07-01 |  | Kettler; Erdgeschoss |
| 22 | Wände putzen OG | 1d? | 2022-07-01 | 2022-07-01 |  | Kettler; Obergeschoss |
